# Six Sigma DMAIC Cycle

Schedule from MS Project, 2007-04-02 to 2007-05-02.

## Calendars

- Standard: Mon-Fri 08:00-12:00, 13:00-17:00; Sat-Sun off.

## Resources

| Resource |
| --- |
| Black Belt |
| Team |
| Black/Green Belt |

## Schedule

| ID | WBS | Task | Type | Duration | Start | Finish | Predecessors | Total slack | Resources | Work |
| --- | --- | --- | --- | --- | --- | --- | --- | --- | --- | --- |
| 1 | 1 | **Define Phase** |  | 4d? | 2007-04-02 | 2007-04-05 |  | 0d |  | 40h |
| 2 | 1.1 | Identify customer and CTQ issues |  | 1d? | 2007-04-02 | 2007-04-02 |  | 0d | Black/Green Belt | 8h |
| 3 | 1.2 | Develop team charter |  | 1d? | 2007-04-02 | 2007-04-02 |  | 2d | Team | 8h |
| 4 | 1.3 | Define process maps |  | 1d? | 2007-04-03 | 2007-04-03 | 2 | 0d | Team | 8h |
| 5 | 1.4 | Map the value stream |  | 1d? | 2007-04-04 | 2007-04-04 | 4 | 0d | Team | 8h |
| 6 | 1.5 | Review deliverables |  | 1d? | 2007-04-05 | 2007-04-05 | 3, 5 | 0d | Black/Green Belt | 8h |
| 7 | 1.6 | Tollgate complete | milestone | 0d | 2007-04-05 | 2007-04-05 | 6 | 0d |  |  |
| 8 | 2 | **Measure Phase** |  | 4d? | 2007-04-06 | 2007-04-11 |  | 0d |  | 32h |
| 9 | 2.1 | Select CTQ characteristics |  | 1d? | 2007-04-06 | 2007-04-06 | 7 | 0d | Team | 8h |
| 10 | 2.2 | Define performance standards |  | 1d? | 2007-04-09 | 2007-04-09 | 9 | 0d | Team | 8h |
| 11 | 2.3 | Establish a data collection plan |  | 1d? | 2007-04-10 | 2007-04-10 | 10 | 0d | Team | 8h |
| 12 | 2.4 | Validate MSA, data collection plan, and SOP |  | 1d? | 2007-04-11 | 2007-04-11 | 11 | 0d | Black/Green Belt | 8h |
| 13 | 2.5 | Tollgate Complete | milestone | 0d | 2007-04-11 | 2007-04-11 | 12 | 0d |  |  |
| 14 | 3 | **Analyze Phase** |  | 4d? | 2007-04-12 | 2007-04-17 |  | 0d |  | 32h |
| 15 | 3.1 | Establish process capability |  | 1d? | 2007-04-12 | 2007-04-12 | 13 | 0d | Team | 8h |
| 16 | 3.2 | Define performance objectives |  | 1d? | 2007-04-13 | 2007-04-13 | 15 | 0d | Team | 8h |
| 17 | 3.3 | Identify variation sources |  | 1d? | 2007-04-16 | 2007-04-16 | 16 | 0d | Team | 8h |
| 18 | 3.4 | Review deliverables |  | 1d? | 2007-04-17 | 2007-04-17 | 17 | 0d | Black/Green Belt | 8h |
| 19 | 3.5 | Tollgate Complete | milestone | 0d | 2007-04-17 | 2007-04-17 | 18 | 0d |  |  |
| 20 | 4 | **Improve Phase** |  | 6d? | 2007-04-18 | 2007-04-25 |  | 0d |  | 48h |
| 21 | 4.1 | Screen potential causes |  | 1d? | 2007-04-18 | 2007-04-18 | 19 | 0d | Team | 8h |
| 22 | 4.2 | Discover variable relationships |  | 1d? | 2007-04-19 | 2007-04-19 | 21 | 0d | Team | 8h |
| 23 | 4.3 | Establish operating tolerances |  | 1d? | 2007-04-20 | 2007-04-20 | 22 | 0d | Team | 8h |
| 24 | 4.4 | Develop a preliminary CBA |  | 1d? | 2007-04-23 | 2007-04-23 | 23 | 0d | Team | 8h |
| 25 | 4.5 | Review deliverables |  | 1d? | 2007-04-24 | 2007-04-24 | 24 | 0d | Black/Green Belt | 8h |
| 26 | 4.6 | Deploy implementation plan |  | 1d? | 2007-04-25 | 2007-04-25 | 25 | 0d | Team | 8h |
| 27 | 4.7 | Tollgate Complete | milestone | 0d | 2007-04-25 | 2007-04-25 | 26 | 0d |  |  |

Notes:
- 1: The purpose of this phase of the cycle is to understand the customer, the customer's Critical To Quality (CTQ) issues, and also understand the core business process involved in the project. At the end of this phase, the team should have a charter that describes what is in/out of scope and the start/stop points of the business process. They will also develop a process flow map during this phase.
- 2: CTQ's (Critical to Quality) are the key measurable characteristics of a product or process whose performance standards or specification limits must be met in order to satisfy the customer. They align improvement or design efforts with customer requirements.
- 6: Key deliverables for this phase are the list of customers and the project CTQs, the team charter, a high-level process map that depicts the Supplier-Input-Process-Output-Customer (SIPOC) for this process, value stream mapping, and a change management process.
- 10: This process may be simple or may involve QFD (Quality Function Deployment) to develop of QFD/CTQ tree. This effort is focused on listening to the voice of the customer and often includes development of a 3 dimensional matrix based on market research. The term, House of Quality, is a component of the QFD process.
- 12: MSA (Measurement System Analysis); SOP refers to Specification limits and Operational definition for the project.
- 18: Typical deliverables from this phase include a baseline of current performance, normality tests, a statistical goal statement for performance, and a list of statistically significant X's (variation sources that can cause or control a process).
- 25: Typical deliverables for this phase include a list of the vital few Xs, Optimal settings and tolerances for the Xs, confirmation runs/results, and a preliminary Cost Benefit Analysis.

| ID | WBS | Task | Type | Duration | Start | Finish | Predecessors | Total slack | Resources | Work |
| --- | --- | --- | --- | --- | --- | --- | --- | --- | --- | --- |
| 28 | 5 | **Control Phase** |  | 5d? | 2007-04-26 | 2007-05-02 |  | 0d |  | 40h |
| 29 | 5.1 | Define and validate measurement system Xs (inputs) |  | 1d? | 2007-04-26 | 2007-04-26 | 27 | 0d | Team | 8h |
| 30 | 5.2 | Determine process capability |  | 1d? | 2007-04-27 | 2007-04-27 | 29 | 0d | Team | 8h |
| 31 | 5.3 | Implement process control |  | 1d? | 2007-04-30 | 2007-04-30 | 30 | 0d | Team | 8h |
| 32 | 5.4 | Review deliverables |  | 1d? | 2007-05-01 | 2007-05-01 | 31 | 0d | Black/Green Belt | 8h |
| 33 | 5.5 | Obtain process owner signoff |  | 1d? | 2007-05-02 | 2007-05-02 | 32 | 0d | Black/Green Belt | 8h |
| 34 | 5.6 | Tollgate complete | milestone | 0d | 2007-05-02 | 2007-05-02 | 33 | 0d |  |  |
| 35 | 6 | DMAIC Cycle Complete | milestone | 0d | 2007-05-02 | 2007-05-02 | 34 | 0d |  |  |

Notes:
- 32: Typical deliverables in this phase include MSA results for the Xs, post-improvement capability (the new way of doing work), statistical confirmation of improvements (control charts, etc.), and a process control plan. Once these items are complete, the team should receive process owner signoff and the new process should become part of a standard continuous improvement review cycle.
